# SD17-V1研发计划

Schedule from a web Gantt chart, 2025-04-16 to 2025-08-28.
Saturdays are off

## Schedule

| ID | WBS | Task | Duration | Start | Finish | Predecessors | Status |
| --- | --- | --- | --- | --- | --- | --- | --- |
| 2 | 1 | **结构设计** | 92d | 2025-04-16 | 2025-07-31 |  | failed |
| 3 | 1.1 | ID+结构堆叠 | 26d | 2025-04-16 | 2025-05-15 |  | failed |
| 4 | 1.2 | 结构评审和修改 | 4d | 2025-05-16 | 2025-05-20 | 3 | failed |
| 5 | 1.3 | 第一阶段结构细化评审 | 1d | 2025-05-21 | 2025-05-21 | 4 | failed |
| 6 | 1.4 | 供应商预选 | 1d | 2025-05-22 | 2025-05-22 | 5 | failed |
| 7 | 1.5 | **DFM修改和评审** | 5d | 2025-05-23 | 2025-05-28 | 6 | failed |
| 8 | 1.5.1 | 供应商输出DFM | 3d | 2025-05-23 | 2025-05-26 |  | failed |
| 9 | 1.5.2 | DFM评审 | 1d | 2025-05-27 | 2025-05-27 | 8 | failed |
| 10 | 1.5.3 | DFM修改确认 | 1d | 2025-05-28 | 2025-05-28 | 9 | failed |
| 11 | 1.6 | 正式T0投模+修模 | 44d | 2025-05-29 | 2025-07-18 | 10 | failed |
| 12 | 1.7 | 回T1 | 11d | 2025-07-20 | 2025-07-31 | 11 | failed |
| 13 | 2 | **硬件设计** | 29d | 2025-05-23 | 2025-06-25 |  |  |
| 14 | 2.1 | 硬件原理图设计完成 | 4d | 2025-05-23 | 2025-05-27 |  |  |
| 15 | 2.2 | 硬件layout | 8d | 2025-05-28 | 2025-06-05 | 14 | waiting |
| 16 | 2.3 | 投PCB板+确认数量并回板 | 7d | 2025-06-06 | 2025-06-13 | 15 | waiting |
| 17 | 2.4 | 回PCBA板 | 4d | 2025-06-15 | 2025-06-18 | 16 | waiting |
| 18 | 2.5 | 硬件裸板调试 | 5d | 2025-06-19 | 2025-06-24 | 17 | waiting |
| 19 | 2.6 | 硬件单元测试完成 | 1d | 2025-06-25 | 2025-06-25 | 18 | waiting |
| 20 | 3 | **软件开发** | 26d | 2025-06-19 | 2025-07-18 |  |  |
| 21 | 3.1 | 裸板调试版本 | 2d | 2025-06-19 | 2025-06-20 |  |  |
| 22 | 3.2 | 单元测试版本 | 3d | 2025-06-22 | 2025-06-24 | 21 | waiting |
| 23 | 3.3 | 工厂版本转测版本完成 | 7d | 2025-06-25 | 2025-07-02 | 22 | waiting |
| 24 | 3.4 | 正式版本转测版本完成 | 14d | 2025-07-03 | 2025-07-18 | 23 | waiting |
| 25 | 4 | **工厂小批** | 6d | 2025-07-20 | 2025-07-25 |  |  |
| 26 | 4.1 | 小批备料 | 2d | 2025-07-20 | 2025-07-21 |  |  |
| 27 | 4.2 | 回PCB,PCBA | 1d | 2025-07-22 | 2025-07-22 | 26 | waiting |
| 28 | 4.3 | NPI装机 | 1d | 2025-07-23 | 2025-07-23 | 27 | waiting |
| 29 | 4.4 | 硬件单元测试 | 1d | 2025-07-24 | 2025-07-24 | 28 | waiting |
| 30 | 4.5 | 图像测试 | 1d | 2025-07-25 | 2025-07-25 | 29 | waiting |
| 31 | 5 | 备量产料 | 1d | 2025-08-28 | 2025-08-28 |  |  |
